Schedule from MS Project, 2017-06-23 to 2018-11-08, A marks actual dates.
ETH Zuerich

## Calendars

- Standard: Mon-Fri 08:00-12:00, 13:00-17:00; Sat-Sun off.

## Schedule

| ID | WBS | Task | Type | Duration | Start | Finish | Predecessors | Complete | Remaining | Baseline start | Baseline finish | Total slack | Constraint |
| --- | --- | --- | --- | --- | --- | --- | --- | --- | --- | --- | --- | --- | --- |
| 1 | 1 | **Andreasturm_Q** |  | 360d | 2017-06-23 A | 2018-11-08 |  | 99% | 0.4d | 2017-06-23 | 2018-11-09 | 0d |  |
| 2 | 1.1 | AT_OR_STR_SLA_SIT_04UG_Z1 | manual | 9d | 2017-06-23 A | 2017-07-05 A |  | 100% |  | 2017-06-23 | 2017-07-05 |  |  |
| 3 | 1.2 | AT_OR_STR_PCO_INS_04UG_Z1 |  | 1.5d | 2017-07-06 A | 2017-07-07 A | 2 | 100% |  | 2017-07-06 | 2017-07-07 |  | start no earlier than 2017-06-23 |
| 4 | 1.3 | AT_OR_STR_SLA_SIT_04UG_Z2 |  | 8d | 2017-07-06 A | 2017-07-17 A | 2 | 100% |  | 2017-07-06 | 2017-07-17 |  |  |
| 5 | 1.4 | AT_OR_STR_PCO_INS_04UG_Z2 |  | 1d | 2017-07-18 A | 2017-07-18 A | 4 | 100% |  | 2017-07-18 | 2017-07-18 |  |  |
| 6 | 1.5 | AT_OR_STR_SLA_SIT_04UG_Z3 |  | 10d | 2017-07-18 A | 2017-07-31 A | 4 | 100% |  | 2017-07-18 | 2017-07-31 |  |  |
| 7 | 1.6 | AT_OR_STR_PCO_INS_04UG_Z3 |  | 1.5d | 2017-07-31 A | 2017-08-01 A | 6 | 100% |  | 2017-07-31 | 2017-08-01 |  |  |
| 8 | 1.7 | AT_OR_STR_SLA_SIT_03UG_Z1 |  | 10d | 2017-07-31 A | 2017-08-11 A | 6 | 100% |  | 2017-07-31 | 2017-08-14 |  |  |
| 9 | 1.8 | AT_OR_STR_PCO_INS_03UG_Z1 |  | 1.5d | 2017-08-14 A | 2017-08-15 A | 8 | 100% |  | 2017-08-14 | 2017-08-15 |  |  |
| 10 | 1.9 | AT_OR_STR_SLA_SIT_03UG_Z2 |  | 9d | 2017-08-14 A | 2017-08-24 A | 8 | 100% |  | 2017-08-14 | 2017-08-24 |  |  |
| 11 | 1.10 | AT_OR_STR_PCO_INS_03UG_Z2 |  | 1d | 2017-08-25 A | 2017-08-25 A | 10 | 100% |  | 2017-08-25 | 2017-08-25 |  |  |
| 12 | 1.11 | AT_OR_STR_SLA_SIT_03UG_Z3 |  | 8d | 2017-08-25 A | 2017-09-05 A | 10 | 100% |  | 2017-08-25 | 2017-09-05 |  |  |
| 13 | 1.12 | AT_OR_STR_PCO_INS_03UG_Z3 |  | 1.5d | 2017-09-05 A | 2017-09-06 A | 12 | 100% |  | 2017-09-05 | 2017-09-06 |  |  |
| 14 | 1.13 | AT_OR_STR_SLA_SIT_02UG_Z1 |  | 9d | 2017-09-05 A | 2017-09-15 A | 12 | 100% |  | 2017-09-05 | 2017-09-15 |  |  |
| 15 | 1.14 | AT_OR_STR_PCO_INS_02UG_Z1 |  | 1.5d | 2017-09-15 A | 2017-09-18 A | 14 | 100% |  | 2017-09-15 | 2017-09-18 |  |  |
| 16 | 1.15 | AT_OR_STR_SLA_SIT_02UG_Z2 |  | 7d | 2017-09-15 A | 2017-09-25 A | 14 | 100% |  | 2017-09-15 | 2017-09-25 |  |  |
| 17 | 1.16 | AT_OR_STR_PCO_INS_02UG_Z2 |  | 1d | 2017-09-26 A | 2017-09-26 A | 16 | 100% |  | 2017-09-26 | 2017-09-26 |  |  |
| 18 | 1.17 | AT_OR_STR_SLA_SIT_02UG_Z3 |  | 10.5d | 2017-09-26 A | 2017-10-10 | 16 | 95% | 0.5d | 2017-09-26 | 2017-10-09 | 282.5d |  |
| 19 | 1.18 | AT_OR_STR_PCO_INS_02UG_Z3 |  | 2d | 2017-10-09 A | 2017-10-10 A | 18 | 100% |  | 2017-10-09 | 2017-10-10 |  |  |
| 20 | 1.19 | AT_OR_STR_SLA_SIT_01UG_Z1 |  | 10d | 2017-10-09 A | 2017-10-20 A | 18 | 100% |  | 2017-10-09 | 2017-10-23 |  |  |
| 21 | 1.20 | AT_OR_STR_PCO_INS_01UG_Z1 |  | 1d | 2017-10-24 A | 2017-10-24 A | 20 | 100% |  | 2017-10-24 | 2017-10-24 |  |  |
| 22 | 1.21 | AT_OR_STR_SLA_SIT_01UG_Z2 |  | 9d | 2017-10-24 A | 2017-11-03 A | 20 | 100% |  | 2017-10-24 | 2017-11-03 |  |  |
| 23 | 1.22 | AT_OR_STR_PCO_INS_01UG_Z2 |  | 1.5d | 2017-11-03 A | 2017-11-06 A | 22 | 100% |  | 2017-11-03 | 2017-11-06 |  |  |
| 24 | 1.23 | AT_OR_STR_SLA_SIT_01UG_Z3 |  | 8d | 2017-11-03 A | 2017-11-14 A | 22 | 100% |  | 2017-11-03 | 2017-11-14 |  |  |
| 25 | 1.24 | AT_OR_STR_PCO_INS_01UG_Z3 |  | 1d | 2017-11-15 A | 2017-11-15 A | 24 | 100% |  | 2017-11-15 | 2017-11-15 |  |  |
| 26 | 1.25 | AT_OR_STR_SLA_SIT_00EG_Z1 |  | 8d | 2017-11-15 A | 2017-11-24 A | 24 | 100% |  | 2017-11-15 | 2017-11-29 |  |  |
| 27 | 1.26 | Phase milestone: completion of underground concrete structure | milestone, manual | 0d | 2017-11-24 | 2017-11-24 |  |  |  |  |  |  |  |
| 28 | 1.27 | AT_OR_STR_PCO_INS_00EG_Z1 |  | 2d | 2017-11-29 A | 2017-11-30 A | 26 | 100% |  | 2017-11-29 | 2017-11-30 |  |  |
| 29 | 1.28 | AT_OR_STR_SLA_SIT_00EG_Z2 |  | 9d | 2017-11-29 A | 2017-12-11 A | 26 | 100% |  | 2017-11-29 | 2017-12-11 |  |  |
| 30 | 1.29 | AT_OR_STR_PCO_INS_00EG_Z2 |  | 1d | 2017-12-11 A | 2017-12-11 A | 29 | 100% |  | 2017-12-11 | 2017-12-12 |  |  |
| 31 | 1.30 | AT_OR_STR_SLA_SIT_00EG_Z3 |  | 8d | 2017-12-11 A | 2017-12-20 A | 29 | 100% |  | 2017-12-11 | 2017-12-20 |  |  |
| 32 | 1.31 | AT_OR_STR_PCO_INS_00EG_Z3 |  | 1.5d | 2017-12-21 A | 2017-12-22 A | 31 | 100% |  | 2017-12-21 | 2017-12-22 |  |  |
| 33 | 1.32 | AT_OR_STR_SLA_SIT_01OG_Z1 |  | 7d | 2017-12-21 A | 2017-12-29 A | 31 | 100% |  | 2017-12-21 | 2017-12-29 |  |  |
| 34 | 1.33 | AT_OR_STR_PCO_INS_01OG_Z1 |  | 1d | 2018-01-01 A | 2018-01-01 A | 33 | 100% |  | 2018-01-01 | 2018-01-01 |  |  |
| 35 | 1.34 | AT_OR_STR_SLA_SIT_01OG_Z2 |  | 7d | 2018-01-01 A | 2018-01-09 A | 33 | 100% |  | 2018-01-01 | 2018-01-09 |  |  |
| 36 | 1.35 | AT_OR_STR_PCO_INS_01OG_Z2 |  | 1.5d | 2018-01-09 A | 2018-01-10 A | 35 | 100% |  | 2018-01-09 | 2018-01-10 |  |  |
| 37 | 1.36 | AT_OR_STR_SLA_SIT_01OG_Z3 |  | 8d | 2018-01-09 A | 2018-01-18 A | 35 | 100% |  | 2018-01-09 | 2018-01-18 |  |  |
| 38 | 1.37 | AT_OR_STR_PCO_INS_01OG_Z3 |  | 1d | 2018-01-19 A | 2018-01-19 A | 37 | 100% |  | 2018-01-19 | 2018-01-19 |  |  |
| 39 | 1.38 | AT_OR_STR_SLA_SIT_02OG_Z1 |  | 8d | 2018-01-19 A | 2018-01-30 A | 37 | 100% |  | 2018-01-19 | 2018-01-30 |  |  |
| 40 | 1.39 | AT_OR_STR_PCO_INS_02OG_Z1 |  | 1.5d | 2018-01-30 A | 2018-01-31 A | 39 | 100% |  | 2018-01-30 | 2018-01-31 |  |  |
| 41 | 1.40 | AT_OR_STR_SLA_SIT_02OG_Z2 |  | 7d | 2018-01-30 A | 2018-02-07 A | 39 | 100% |  | 2018-01-30 | 2018-02-07 |  |  |
| 42 | 1.41 | AT_OR_STR_PCO_INS_02OG_Z2 |  | 1d | 2018-02-08 A | 2018-02-08 A | 41 | 100% |  | 2018-02-08 | 2018-02-08 |  |  |
| 43 | 1.42 | AT_OR_STR_SLA_SIT_02OG_Z3 |  | 8d | 2018-02-08 A | 2018-02-19 A | 41 | 100% |  | 2018-02-08 | 2018-02-19 |  |  |
| 44 | 1.43 | AT_OR_STR_PCO_INS_02OG_Z3 |  | 2d | 2018-02-19 A | 2018-02-20 A | 43 | 100% |  | 2018-02-19 | 2018-02-20 |  |  |
| 45 | 1.44 | AT_OR_STR_SLA_SIT_03OG_Z1 |  | 9d | 2018-02-19 A | 2018-03-01 A | 43 | 100% |  | 2018-02-19 | 2018-03-05 |  |  |
| 46 | 1.45 | AT_OR_STR_PCO_INS_03OG_Z1 |  | 1d | 2018-03-06 A | 2018-03-06 A | 45 | 100% |  | 2018-03-06 | 2018-03-06 |  |  |
| 47 | 1.46 | AT_OR_STR_SLA_SIT_03OG_Z2 |  | 8d | 2018-03-06 A | 2018-03-15 A | 45 | 100% |  | 2018-03-06 | 2018-03-15 |  |  |
| 48 | 1.47 | AT_OR_STR_PCO_INS_03OG_Z2 |  | 1d | 2018-03-15 A | 2018-03-15 A | 47 | 100% |  | 2018-03-15 | 2018-03-16 |  |  |
| 49 | 1.48 | AT_OR_STR_SLA_SIT_03OG_Z3 |  | 6.5d | 2018-03-15 A | 2018-03-23 A | 47 | 100% |  | 2018-03-15 | 2018-03-27 |  |  |
| 50 | 1.49 | AT_OR_STR_PCO_INS_03OG_Z3 |  | 1d | 2018-03-27 A | 2018-03-27 A | 49 | 100% |  | 2018-03-27 | 2018-03-28 |  |  |
| 51 | 1.50 | AT_OR_STR_SLA_SIT_04OG_Z1 |  | 3d | 2018-03-27 A | 2018-03-29 A | 49 | 100% |  | 2018-03-27 | 2018-03-30 |  |  |
| 52 | 1.51 | AT_OR_STR_PCO_INS_04OG_Z1 |  | 1d | 2018-03-30 A | 2018-03-30 A | 51 | 100% |  | 2018-03-30 | 2018-04-02 |  |  |
| 53 | 1.52 | AT_OR_STR_SLA_SIT_04OG_Z2 |  | 3d | 2018-03-30 A | 2018-04-03 A | 51 | 100% |  | 2018-03-30 | 2018-04-04 |  |  |
| 54 | 1.53 | AT_OR_STR_PCO_INS_04OG_Z2 |  | 1d | 2018-04-04 A | 2018-04-04 A | 53 | 100% |  | 2018-04-04 | 2018-04-05 |  |  |
| 55 | 1.54 | AT_OR_STR_SLA_SIT_04OG_Z3 |  | 3d | 2018-04-04 A | 2018-04-06 A | 53 | 100% |  | 2018-04-04 | 2018-04-09 |  |  |
| 56 | 1.55 | AT_OR_STR_PCO_INS_04OG_Z3 |  | 1d | 2018-04-09 A | 2018-04-09 A | 55 | 100% |  | 2018-04-09 | 2018-04-10 |  |  |
| 57 | 1.56 | AT_OR_STR_SLA_SIT_05OG_Z1 |  | 3d | 2018-04-09 A | 2018-04-11 A | 55 | 100% |  | 2018-04-09 | 2018-04-12 |  |  |
| 58 | 1.57 | AT_OR_STR_PCO_INS_05OG_Z1 |  | 1d | 2018-04-12 A | 2018-04-12 A | 57 | 100% |  | 2018-04-12 | 2018-04-13 |  |  |
| 59 | 1.58 | AT_OR_STR_SLA_SIT_05OG_Z2 |  | 3d | 2018-04-12 A | 2018-04-16 A | 57 | 100% |  | 2018-04-12 | 2018-04-17 |  |  |
| 60 | 1.59 | AT_OR_STR_PCO_INS_05OG_Z2 |  | 1d | 2018-04-17 A | 2018-04-17 A | 59 | 100% |  | 2018-04-17 | 2018-04-18 |  |  |
| 61 | 1.60 | AT_OR_STR_SLA_SIT_05OG_Z3 |  | 3d | 2018-04-17 A | 2018-04-19 A | 59 | 100% |  | 2018-04-17 | 2018-04-20 |  |  |
| 62 | 1.61 | AT_OR_STR_PCO_INS_05OG_Z3 |  | 1d | 2018-04-20 A | 2018-04-20 A | 61 | 100% |  | 2018-04-20 | 2018-04-23 |  |  |
| 63 | 1.62 | AT_OR_STR_SLA_SIT_06OG_Z1 |  | 3d | 2018-04-20 A | 2018-04-24 A | 61 | 100% |  | 2018-04-20 | 2018-04-25 |  |  |
| 64 | 1.63 | AT_OR_STR_PCO_INS_06OG_Z1 |  | 1d | 2018-04-25 A | 2018-04-25 A | 63 | 100% |  | 2018-04-25 | 2018-04-26 |  |  |
| 65 | 1.64 | AT_OR_STR_SLA_SIT_06OG_Z2 |  | 3d | 2018-04-25 A | 2018-04-27 A | 63 | 100% |  | 2018-04-25 | 2018-04-30 |  |  |
| 66 | 1.65 | AT_OR_STR_PCO_INS_06OG_Z2 |  | 1d | 2018-04-30 A | 2018-04-30 A | 65 | 100% |  | 2018-04-30 | 2018-05-01 |  |  |
| 67 | 1.66 | AT_OR_STR_SLA_SIT_06OG_Z3 |  | 3d | 2018-04-30 A | 2018-05-02 A | 65 | 100% |  | 2018-04-30 | 2018-05-03 |  |  |
| 68 | 1.67 | AT_OR_STR_PCO_INS_06OG_Z3 |  | 1d | 2018-05-03 A | 2018-05-03 A | 67 | 100% |  | 2018-05-03 | 2018-05-04 |  |  |
| 69 | 1.68 | Phase milestone: completion 30% of superstructure | milestone, manual | 0d | 2018-05-03 | 2018-05-03 |  |  |  |  |  |  |  |
| 70 | 1.69 | AT_OR_STR_SLA_SIT_07OG_Z1 |  | 3d | 2018-05-03 A | 2018-05-07 A | 67 | 100% |  | 2018-05-03 | 2018-05-08 |  |  |

| ID | WBS | Task | Type | Duration | Start | Finish | Predecessors | Complete | Baseline start | Baseline finish |
| --- | --- | --- | --- | --- | --- | --- | --- | --- | --- | --- |
| 71 | 1.70 | AT_OR_STR_PCO_INS_07OG_Z1 |  | 1d | 2018-05-08 A | 2018-05-08 A | 70 | 100% | 2018-05-08 | 2018-05-09 |
| 72 | 1.71 | AT_OR_STR_SLA_SIT_07OG_Z2 |  | 3d | 2018-05-08 A | 2018-05-10 A | 70 | 100% | 2018-05-08 | 2018-05-11 |
| 73 | 1.72 | AT_OR_STR_PCO_INS_07OG_Z2 |  | 1d | 2018-05-11 A | 2018-05-11 A | 72 | 100% | 2018-05-11 | 2018-05-14 |
| 74 | 1.73 | AT_OR_STR_SLA_SIT_07OG_Z3 |  | 3d | 2018-05-11 A | 2018-05-15 A | 72 | 100% | 2018-05-11 | 2018-05-16 |
| 75 | 1.74 | AT_OR_STR_PCO_INS_07OG_Z3 |  | 1d | 2018-05-16 A | 2018-05-16 A | 74 | 100% | 2018-05-16 | 2018-05-17 |
| 76 | 1.75 | AT_OR_STR_SLA_SIT_08OG_Z1 |  | 3d | 2018-05-16 A | 2018-05-18 A | 74 | 100% | 2018-05-16 | 2018-05-21 |
| 77 | 1.76 | AT_OR_STR_PCO_INS_08OG_Z1 |  | 1d | 2018-05-21 A | 2018-05-21 A | 76 | 100% | 2018-05-21 | 2018-05-22 |
| 78 | 1.77 | AT_OR_STR_SLA_SIT_08OG_Z2 |  | 3d | 2018-05-21 A | 2018-05-23 A | 76 | 100% | 2018-05-21 | 2018-05-24 |
| 79 | 1.78 | AT_OR_STR_PCO_INS_08OG_Z2 |  | 1d | 2018-05-24 A | 2018-05-24 A | 78 | 100% | 2018-05-24 | 2018-05-25 |
| 80 | 1.79 | AT_OR_STR_SLA_SIT_08OG_Z3 |  | 3d | 2018-05-24 A | 2018-05-28 A | 78 | 100% | 2018-05-24 | 2018-05-29 |
| 81 | 1.80 | AT_OR_STR_PCO_INS_08OG_Z3 |  | 1d | 2018-05-29 A | 2018-05-29 A | 80 | 100% | 2018-05-29 | 2018-05-30 |
| 82 | 1.81 | AT_OR_STR_SLA_SIT_09OG_Z1 |  | 3d | 2018-05-29 A | 2018-05-31 A | 80 | 100% | 2018-05-29 | 2018-06-01 |
| 83 | 1.82 | AT_OR_STR_PCO_INS_09OG_Z1 |  | 1d | 2018-06-01 A | 2018-06-01 A | 82 | 100% | 2018-06-01 | 2018-06-04 |
| 84 | 1.83 | AT_OR_STR_SLA_SIT_09OG_Z2 |  | 3d | 2018-06-01 A | 2018-06-05 A | 82 | 100% | 2018-06-01 | 2018-06-06 |
| 85 | 1.84 | AT_OR_STR_PCO_INS_09OG_Z2 |  | 1d | 2018-06-06 A | 2018-06-06 A | 84 | 100% | 2018-06-06 | 2018-06-07 |
| 86 | 1.85 | AT_OR_STR_SLA_SIT_09OG_Z3 |  | 3d | 2018-06-06 A | 2018-06-08 A | 84 | 100% | 2018-06-06 | 2018-06-11 |
| 87 | 1.86 | AT_OR_STR_PCO_INS_09OG_Z3 |  | 1d | 2018-06-11 A | 2018-06-11 A | 86 | 100% | 2018-06-11 | 2018-06-12 |
| 88 | 1.87 | AT_OR_STR_SLA_SIT_10OG_Z1 |  | 3d | 2018-06-11 A | 2018-06-13 A | 86 | 100% | 2018-06-11 | 2018-06-14 |
| 89 | 1.88 | AT_OR_STR_PCO_INS_10OG_Z1 |  | 1d | 2018-06-14 A | 2018-06-14 A | 88 | 100% | 2018-06-14 | 2018-06-15 |
| 90 | 1.89 | AT_OR_STR_SLA_SIT_10OG_Z2 |  | 3d | 2018-06-14 A | 2018-06-18 A | 88 | 100% | 2018-06-14 | 2018-06-19 |
| 91 | 1.90 | AT_OR_STR_PCO_INS_10OG_Z2 |  | 1d | 2018-06-19 A | 2018-06-19 A | 90 | 100% | 2018-06-19 | 2018-06-20 |
| 92 | 1.91 | AT_OR_STR_SLA_SIT_10OG_Z3 |  | 3d | 2018-06-19 A | 2018-06-21 A | 90 | 100% | 2018-06-19 | 2018-06-22 |
| 93 | 1.92 | AT_OR_STR_PCO_INS_10OG_Z3 |  | 1d | 2018-06-22 A | 2018-06-22 A | 92 | 100% | 2018-06-22 | 2018-06-25 |
| 94 | 1.93 | AT_OR_STR_SLA_SIT_11OG_Z1 |  | 3d | 2018-06-22 A | 2018-06-26 A | 92 | 100% | 2018-06-22 | 2018-06-27 |
| 95 | 1.94 | AT_OR_STR_PCO_INS_11OG_Z1 |  | 1d | 2018-06-27 A | 2018-06-27 A | 94 | 100% | 2018-06-27 | 2018-06-28 |
| 96 | 1.95 | AT_OR_STR_SLA_SIT_11OG_Z2 |  | 3d | 2018-06-27 A | 2018-06-29 A | 94 | 100% | 2018-06-27 | 2018-07-02 |
| 97 | 1.96 | AT_OR_STR_PCO_INS_11OG_Z2 |  | 1d | 2018-07-02 A | 2018-07-02 A | 96 | 100% | 2018-07-02 | 2018-07-03 |
| 98 | 1.97 | AT_OR_STR_SLA_SIT_11OG_Z3 |  | 3d | 2018-07-02 A | 2018-07-04 A | 96 | 100% | 2018-07-02 | 2018-07-05 |
| 99 | 1.98 | AT_OR_STR_PCO_INS_11OG_Z3 |  | 1d | 2018-07-05 A | 2018-07-05 A | 98 | 100% | 2018-07-05 | 2018-07-06 |
| 100 | 1.99 | AT_OR_STR_SLA_SIT_12OG_Z1 |  | 3d | 2018-07-05 A | 2018-07-09 A | 98 | 100% | 2018-07-05 | 2018-07-10 |
| 101 | 1.100 | AT_OR_STR_PCO_INS_12OG_Z1 |  | 1d | 2018-07-10 A | 2018-07-10 A | 100 | 100% | 2018-07-10 | 2018-07-11 |
| 102 | 1.101 | AT_OR_STR_SLA_SIT_12OG_Z2 |  | 3d | 2018-07-10 A | 2018-07-12 A | 100 | 100% | 2018-07-10 | 2018-07-13 |
| 103 | 1.102 | AT_OR_STR_PCO_INS_12OG_Z2 |  | 1d | 2018-07-13 A | 2018-07-13 A | 102 | 100% | 2018-07-13 | 2018-07-16 |
| 104 | 1.103 | AT_OR_STR_SLA_SIT_12OG_Z3 |  | 3d | 2018-07-13 A | 2018-07-17 A | 102 | 100% | 2018-07-13 | 2018-07-18 |
| 105 | 1.104 | AT_OR_STR_PCO_INS_12OG_Z3 |  | 1d | 2018-07-18 A | 2018-07-18 A | 104 | 100% | 2018-07-18 | 2018-07-19 |
| 106 | 1.105 | AT_OR_STR_SLA_SIT_13OG_Z1 |  | 3d | 2018-07-18 A | 2018-07-20 A | 104 | 100% | 2018-07-18 | 2018-07-23 |
| 107 | 1.106 | AT_OR_STR_PCO_INS_13OG_Z1 |  | 1d | 2018-07-23 A | 2018-07-23 A | 106 | 100% | 2018-07-23 | 2018-07-24 |
| 108 | 1.107 | AT_OR_STR_SLA_SIT_13OG_Z2 |  | 3d | 2018-07-23 A | 2018-07-25 A | 106 | 100% | 2018-07-23 | 2018-07-26 |
| 109 | 1.108 | AT_OR_STR_PCO_INS_13OG_Z2 |  | 1d | 2018-07-26 A | 2018-07-26 A | 108 | 100% | 2018-07-26 | 2018-07-27 |
| 110 | 1.109 | AT_OR_STR_SLA_SIT_13OG_Z3 |  | 3d | 2018-07-26 A | 2018-07-30 A | 108 | 100% | 2018-07-26 | 2018-07-31 |
| 111 | 1.110 | AT_OR_STR_PCO_INS_13OG_Z3 |  | 1d | 2018-07-31 A | 2018-07-31 A | 110 | 100% | 2018-07-31 | 2018-08-01 |
| 112 | 1.111 | Phase milestone: completion of 60% superstructure | milestone, manual | 0d | 2018-07-31 | 2018-07-31 |  |  |  |  |
| 113 | 1.112 | AT_OR_STR_SLA_SIT_14OG_Z1 |  | 3d | 2018-07-31 A | 2018-08-02 A | 110 | 100% | 2018-07-31 | 2018-08-03 |
| 114 | 1.113 | AT_OR_STR_PCO_INS_14OG_Z1 |  | 1d | 2018-08-03 A | 2018-08-03 A | 113 | 100% | 2018-08-03 | 2018-08-06 |
| 115 | 1.114 | AT_OR_STR_SLA_SIT_14OG_Z2 |  | 3d | 2018-08-03 A | 2018-08-07 A | 113 | 100% | 2018-08-03 | 2018-08-08 |
| 116 | 1.115 | AT_OR_STR_PCO_INS_14OG_Z2 |  | 1d | 2018-08-08 A | 2018-08-08 A | 115 | 100% | 2018-08-08 | 2018-08-09 |
| 117 | 1.116 | AT_OR_STR_SLA_SIT_14OG_Z3 |  | 3d | 2018-08-08 A | 2018-08-10 A | 115 | 100% | 2018-08-08 | 2018-08-13 |
| 118 | 1.117 | AT_OR_STR_PCO_INS_14OG_Z3 |  | 1d | 2018-08-13 A | 2018-08-13 A | 117 | 100% | 2018-08-13 | 2018-08-14 |
| 119 | 1.118 | AT_OR_STR_SLA_SIT_15OG_Z1 |  | 3d | 2018-08-13 A | 2018-08-15 A | 117 | 100% | 2018-08-13 | 2018-08-16 |
| 120 | 1.119 | AT_OR_STR_PCO_INS_15OG_Z1 |  | 1d | 2018-08-16 A | 2018-08-16 A | 119 | 100% | 2018-08-16 | 2018-08-17 |
| 121 | 1.120 | AT_OR_STR_SLA_SIT_15OG_Z2 |  | 3d | 2018-08-16 A | 2018-08-20 A | 119 | 100% | 2018-08-16 | 2018-08-21 |
| 122 | 1.121 | AT_OR_STR_PCO_INS_15OG_Z2 |  | 1d | 2018-08-21 A | 2018-08-21 A | 121 | 100% | 2018-08-21 | 2018-08-22 |
| 123 | 1.122 | AT_OR_STR_SLA_SIT_15OG_Z3 |  | 3d | 2018-08-21 A | 2018-08-23 A | 121 | 100% | 2018-08-21 | 2018-08-24 |
| 124 | 1.123 | AT_OR_STR_PCO_INS_15OG_Z3 |  | 1d | 2018-08-24 A | 2018-08-24 A | 123 | 100% | 2018-08-24 | 2018-08-27 |
| 125 | 1.124 | AT_OR_STR_SLA_SIT_16OG_Z1 |  | 3d | 2018-08-24 A | 2018-08-28 A | 123 | 100% | 2018-08-24 | 2018-08-29 |
| 126 | 1.125 | AT_OR_STR_PCO_INS_16OG_Z1 |  | 1d | 2018-08-29 A | 2018-08-29 A | 125 | 100% | 2018-08-29 | 2018-08-30 |
| 127 | 1.126 | AT_OR_STR_SLA_SIT_16OG_Z2 |  | 3d | 2018-08-29 A | 2018-08-31 A | 125 | 100% | 2018-08-29 | 2018-09-03 |
| 128 | 1.127 | AT_OR_STR_PCO_INS_16OG_Z2 |  | 1d | 2018-09-03 A | 2018-09-03 A | 127 | 100% | 2018-09-03 | 2018-09-04 |
| 129 | 1.128 | AT_OR_STR_SLA_SIT_16OG_Z3 |  | 3d | 2018-09-03 A | 2018-09-05 A | 127 | 100% | 2018-09-03 | 2018-09-06 |
| 130 | 1.129 | AT_OR_STR_PCO_INS_16OG_Z3 |  | 1d | 2018-09-06 A | 2018-09-06 A | 129 | 100% | 2018-09-06 | 2018-09-07 |
| 131 | 1.130 | AT_OR_STR_SLA_SIT_17OG_Z1 |  | 3d | 2018-09-06 A | 2018-09-10 A | 129 | 100% | 2018-09-06 | 2018-09-11 |
| 132 | 1.131 | AT_OR_STR_PCO_INS_17OG_Z1 |  | 1d | 2018-09-11 A | 2018-09-11 A | 131 | 100% | 2018-09-11 | 2018-09-12 |
| 133 | 1.132 | AT_OR_STR_SLA_SIT_17OG_Z2 |  | 3d | 2018-09-11 A | 2018-09-13 A | 131 | 100% | 2018-09-11 | 2018-09-14 |
| 134 | 1.133 | AT_OR_STR_PCO_INS_17OG_Z2 |  | 1d | 2018-09-14 A | 2018-09-14 A | 133 | 100% | 2018-09-14 | 2018-09-17 |
| 135 | 1.134 | AT_OR_STR_SLA_SIT_17OG_Z3 |  | 3d | 2018-09-14 A | 2018-09-18 A | 133 | 100% | 2018-09-14 | 2018-09-19 |
| 136 | 1.135 | AT_OR_STR_PCO_INS_17OG_Z3 |  | 1d | 2018-09-19 A | 2018-09-19 A | 135 | 100% | 2018-09-19 | 2018-09-20 |
| 137 | 1.136 | AT_OR_STR_SLA_SIT_18OG_Z1 |  | 3d | 2018-09-19 A | 2018-09-21 A | 135 | 100% | 2018-09-19 | 2018-09-24 |
| 138 | 1.137 | AT_OR_STR_PCO_INS_18OG_Z1 |  | 1d | 2018-09-24 A | 2018-09-24 A | 137 | 100% | 2018-09-24 | 2018-09-25 |
| 139 | 1.138 | AT_OR_STR_SLA_SIT_18OG_Z2 |  | 3d | 2018-09-24 A | 2018-09-26 A | 137 | 100% | 2018-09-24 | 2018-09-27 |
| 140 | 1.139 | AT_OR_STR_PCO_INS_18OG_Z2 |  | 1d | 2018-09-27 A | 2018-09-27 A | 139 | 100% | 2018-09-27 | 2018-09-28 |

| ID | WBS | Task | Type | Duration | Start | Finish | Predecessors | Complete | Baseline start | Baseline finish |
| --- | --- | --- | --- | --- | --- | --- | --- | --- | --- | --- |
| 141 | 1.140 | AT_OR_STR_SLA_SIT_18OG_Z3 |  | 3d | 2018-09-27 A | 2018-10-01 A | 139 | 100% | 2018-09-27 | 2018-10-02 |
| 142 | 1.141 | AT_OR_STR_PCO_INS_18OG_Z3 |  | 1d | 2018-10-02 A | 2018-10-02 A | 141 | 100% | 2018-10-02 | 2018-10-03 |
| 143 | 1.142 | AT_OR_STR_SLA_SIT_19OG_Z1 |  | 3d | 2018-10-02 A | 2018-10-04 A | 141 | 100% | 2018-10-02 | 2018-10-05 |
| 144 | 1.143 | AT_OR_STR_PCO_INS_19OG_Z1 |  | 1d | 2018-10-05 A | 2018-10-05 A | 143 | 100% | 2018-10-05 | 2018-10-08 |
| 145 | 1.144 | AT_OR_STR_SLA_SIT_19OG_Z2 |  | 3d | 2018-10-05 A | 2018-10-09 A | 143 | 100% | 2018-10-05 | 2018-10-10 |
| 146 | 1.145 | AT_OR_STR_PCO_INS_19OG_Z2 |  | 1d | 2018-10-10 A | 2018-10-10 A | 145 | 100% | 2018-10-10 | 2018-10-11 |
| 147 | 1.146 | AT_OR_STR_SLA_SIT_19OG_Z3 |  | 3d | 2018-10-10 A | 2018-10-12 A | 145 | 100% | 2018-10-10 | 2018-10-15 |
| 148 | 1.147 | AT_OR_STR_PCO_INS_19OG_Z3 |  | 1d | 2018-10-15 A | 2018-10-15 A | 147 | 100% | 2018-10-15 | 2018-10-16 |
| 149 | 1.148 | AT_OR_STR_SLA_SIT_20OG_Z1 |  | 3d | 2018-10-15 A | 2018-10-17 A | 147 | 100% | 2018-10-15 | 2018-10-18 |
| 150 | 1.149 | AT_OR_STR_PCO_INS_20OG_Z1 |  | 1d | 2018-10-18 A | 2018-10-18 A | 149 | 100% | 2018-10-18 | 2018-10-19 |
| 151 | 1.150 | AT_OR_STR_SLA_SIT_20OG_Z2 |  | 3d | 2018-10-18 A | 2018-10-22 A | 149 | 100% | 2018-10-18 | 2018-10-23 |
| 152 | 1.151 | AT_OR_STR_PCO_INS_20OG_Z2 |  | 1d | 2018-10-23 A | 2018-10-23 A | 151 | 100% | 2018-10-23 | 2018-10-24 |
| 153 | 1.152 | AT_OR_STR_SLA_SIT_20OG_Z3 |  | 3d | 2018-10-23 A | 2018-10-25 A | 151 | 100% | 2018-10-23 | 2018-10-26 |
| 154 | 1.153 | AT_OR_STR_PCO_INS_20OG_Z3 |  | 1d | 2018-10-26 A | 2018-10-26 A | 153 | 100% | 2018-10-26 | 2018-10-29 |
| 155 | 1.154 | AT_OR_STR_SLA_SIT_21OG_Z1 |  | 3d | 2018-10-26 A | 2018-10-30 A | 153 | 100% | 2018-10-26 | 2018-10-31 |
| 156 | 1.155 | AT_OR_STR_PCO_INS_21OG_Z1 |  | 1d | 2018-10-31 A | 2018-10-31 A | 155 | 100% | 2018-10-31 | 2018-11-01 |
| 157 | 1.156 | AT_OR_STR_SLA_SIT_21OG_Z2 |  | 3d | 2018-10-31 A | 2018-11-02 A | 155 | 100% | 2018-10-31 | 2018-11-05 |
| 158 | 1.157 | AT_OR_STR_PCO_INS_21OG_Z2 |  | 1d | 2018-11-05 A | 2018-11-05 A | 157 | 100% | 2018-11-05 | 2018-11-06 |
| 159 | 1.158 | AT_OR_STR_SLA_SIT_21OG_Z3 |  | 3d | 2018-11-05 A | 2018-11-07 A | 157 | 100% | 2018-11-05 | 2018-11-08 |
| 160 | 1.159 | AT_OR_STR_PCO_INS_21OG_Z3 |  | 1d | 2018-11-08 A | 2018-11-08 A | 159 | 100% | 2018-11-08 | 2018-11-09 |
| 161 | 1.160 | Project milestone: completion of 100% superstructure | milestone, manual | 0d | 2018-11-08 | 2018-11-08 |  |  |  |  |
